# Proyecto CMH

Schedule from MS Project, 2016-08-29 to 2016-11-20, costs in $, A marks actual dates.

## Calendars

- Estándar: Mon-Fri 09:00-13:00, 15:00-19:00; Sat-Sun off. Exceptions (off unless hours are given): 2016-09-19 (Día de las glorias del ejército), 2016-10-10 (Encuentro de dos mundo), 2016-10-31 (Día nacional de las iglesias evangélicas y protestantes), 2016-11-01 (Día de todos los santos).

## Resources

| Resource | Rate |
| --- | --- |
| Pablo de la Sotta | 13000 |
| Tomás Muñiz | 13000 |
| Gonzalo López | 13000 |
| Fabián Jaque | 13000 |
| Elías Baeza | 13000 |

## Schedule

| ID | WBS | Task | Type | Duration | Start | Finish | Predecessors | Complete | Constraint | Resources | Work | Actual work | Cost | Actual cost |
| --- | --- | --- | --- | --- | --- | --- | --- | --- | --- | --- | --- | --- | --- | --- |
| 1 | 1 | **Iteración 1: Planificación del proyecto** |  | 19d | 2016-08-29 A | 2016-09-25 A |  | 100% |  |  | 336h | 336h | 4,368,000 | 4,368,000 |
| 2 | 1.1 | **Análisis y planificación del proyecto** |  | 12d | 2016-08-29 A | 2016-09-13 A |  | 100% |  |  | 248h | 248h | 3,224,000 | 3,224,000 |
| 3 | 1.1.1 | **Definición del proyecto** |  | 10d | 2016-08-29 A | 2016-09-09 A |  | 100% |  |  | 224h | 224h | 2,912,000 | 2,912,000 |
| 4 | 1.1.1.1 | Elaborar alcance |  | 5d | 2016-08-29 A | 2016-09-02 A |  | 100% |  | Fabián Jaque; Gonzalo López | 80h | 80h | 1,040,000 | 1,040,000 |
| 5 | 1.1.1.2 | Elaborar ERS |  | 5d | 2016-08-29 A | 2016-09-02 A |  | 100% |  | Tomás Muñiz | 40h | 40h | 520,000 | 520,000 |
| 6 | 1.1.1.3 | Elaborar modelos de proceso |  | 10d | 2016-08-29 A | 2016-09-09 A |  | 100% |  | Pablo de la Sotta | 80h | 80h | 1,040,000 | 1,040,000 |
| 7 | 1.1.1.4 | Establecer objetivos |  | 3d | 2016-08-29 A | 2016-08-31 A |  | 100% |  | Elías Baeza | 24h | 24h | 312,000 | 312,000 |
| 8 | 1.1.1.5 | Entrega matriz de objetivos | milestone | 0d | 2016-08-31 A | 2016-08-31 A | 7 | 100% |  |  |  |  |  |  |
| 9 | 1.1.1.6 | Entrega documento alcance | milestone | 0d | 2016-09-02 A | 2016-09-02 A | 4 | 100% |  |  |  |  |  |  |
| 10 | 1.1.1.7 | Entrega ERS | milestone | 0d | 2016-09-02 A | 2016-09-02 A | 5 | 100% |  |  |  |  |  |  |
| 11 | 1.1.1.8 | Entregar modelos de proceso | milestone | 0d | 2016-09-09 A | 2016-09-09 A | 6 | 100% |  |  |  |  |  |  |
| 12 | 1.1.2 | **Organización del proyecto** |  | 2d | 2016-09-12 A | 2016-09-13 A | 3 | 100% |  |  | 24h | 24h | 312,000 | 312,000 |
| 13 | 1.1.2.1 | Elaborar estructura organizacional |  | 1d | 2016-09-12 A | 2016-09-12 A |  | 100% |  | Gonzalo López | 8h | 8h | 104,000 | 104,000 |
| 14 | 1.1.2.2 | Establecer responsables |  | 1d | 2016-09-12 A | 2016-09-12 A |  | 100% |  | Tomás Muñiz | 8h | 8h | 104,000 | 104,000 |
| 15 | 1.1.2.3 | Establecer interfaces e interacciones |  | 1d | 2016-09-13 A | 2016-09-13 A | 14 | 100% |  | Tomás Muñiz | 8h | 8h | 104,000 | 104,000 |
| 16 | 1.1.2.4 | Entregar documento organizacional | milestone | 0d | 2016-09-13 A | 2016-09-13 A | 13, 14, 15 | 100% |  |  |  |  |  |  |
| 17 | 1.2 | **Planificación de gestión** |  | 3d | 2016-09-14 A | 2016-09-16 A | 12 | 100% |  |  | 48h | 48h | 624,000 | 624,000 |
| 18 | 1.2.1 | Definir restricciones |  | 2d | 2016-09-14 A | 2016-09-15 A |  | 100% |  | Elías Baeza | 16h | 16h | 208,000 | 208,000 |
| 19 | 1.2.2 | Elaborar plan de gestión de riesgos |  | 2d | 2016-09-14 A | 2016-09-15 A |  | 100% |  | Fabián Jaque | 16h | 16h | 208,000 | 208,000 |
| 20 | 1.2.3 | Definir condiciones asumidas |  | 1d | 2016-09-14 A | 2016-09-14 A |  | 100% |  | Pablo de la Sotta | 8h | 8h | 104,000 | 104,000 |
| 21 | 1.2.4 | Elaborar mecanismos de control y ajuste |  | 1d | 2016-09-16 A | 2016-09-16 A | 18 | 100% |  | Elías Baeza | 8h | 8h | 104,000 | 104,000 |
| 22 | 1.2.5 | Entregar plan de gestión | milestone | 0d | 2016-09-16 A | 2016-09-16 A | 20, 21, 19 | 100% |  |  |  |  |  |  |
| 23 | 1.3 | **Recursos humanos** |  | 4d | 2016-09-20 A | 2016-09-23 A | 17 | 100% |  |  | 40h | 40h | 520,000 | 520,000 |
| 24 | 1.3.1 | Planificar distribución de recursos humanos |  | 1d | 2016-09-20 A | 2016-09-20 A |  | 100% |  | Fabián Jaque | 8h | 8h | 104,000 | 104,000 |
| 25 | 1.3.2 | Establecer dependencias |  | 1d | 2016-09-20 A | 2016-09-20 A |  | 100% |  | Tomás Muñiz | 8h | 8h | 104,000 | 104,000 |
| 26 | 1.3.3 | Elaborar cronograma |  | 3d | 2016-09-21 A | 2016-09-23 A | 24 | 100% |  | Fabián Jaque | 24h | 24h | 312,000 | 312,000 |
| 27 | 1.3.4 | Entregar plan de recursos humanos | milestone | 0d | 2016-09-23 A | 2016-09-23 A | 25, 26 | 100% |  |  |  |  |  |  |
| 28 | 1.4 | Entregar plan de proyecto | milestone | 0d | 2016-09-25 A | 2016-09-25 A |  | 100% | finish no earlier than 2016-09-25 |  |  |  |  |  |

| ID | WBS | Task | Type | Duration | Start | Finish | Predecessors | Complete | Resources | Work | Actual work | Cost | Actual cost |
| --- | --- | --- | --- | --- | --- | --- | --- | --- | --- | --- | --- | --- | --- |
| 29 | 2 | **Iteración 2: Diseño, construcción y documentación del backend y tests unitarios** |  | 24d | 2016-09-26 A | 2016-10-30 A | 1 | 100% |  | 384h | 384h | 4,992,000 | 4,992,000 |
| 30 | 2.1 | **Arquitectura** |  | 7d | 2016-09-26 A | 2016-10-04 A |  | 100% |  | 136h | 136h | 1,768,000 | 1,768,000 |
| 31 | 2.1.1 | Elaborar casos de uso |  | 3d | 2016-09-26 A | 2016-09-28 A |  | 100% | Fabián Jaque; Pablo de la Sotta | 48h | 48h | 624,000 | 624,000 |
| 32 | 2.1.2 | Diagramar casos de uso |  | 1d | 2016-09-29 A | 2016-09-29 A | 31 | 100% | Elías Baeza | 8h | 8h | 104,000 | 104,000 |
| 33 | 2.1.3 | Elaborar especificación de casos de uso |  | 4d | 2016-09-29 A | 2016-10-04 A | 31 | 100% | Gonzalo López; Tomás Muñiz | 64h | 64h | 832,000 | 832,000 |
| 34 | 2.1.4 | Elaborar diagrama de despliegue |  | 2d | 2016-09-29 A | 2016-09-30 A | 31 | 100% | Pablo de la Sotta | 16h | 16h | 208,000 | 208,000 |
| 35 | 2.1.5 | Entrega documento arquitectura | milestone | 0d | 2016-10-04 A | 2016-10-04 A | 33, 34 | 100% |  |  |  |  |  |
| 36 | 2.2 | **Documentación** |  | 17d | 2016-09-26 A | 2016-10-19 A |  | 100% |  | 16h | 16h | 208,000 | 208,000 |
| 37 | 2.2.1 | Matriz de trazabilidad: Requerimientos vs casos de uso |  | 1d | 2016-09-26 A | 2016-09-26 A |  | 100% | Tomás Muñiz | 8h | 8h | 104,000 | 104,000 |
| 38 | 2.2.2 | Matriz de trazabilidad: Requerimientos vs clases |  | 1d | 2016-10-19 A | 2016-10-19 A | 45 | 100% | Elías Baeza | 8h | 8h | 104,000 | 104,000 |
| 39 | 2.3 | **Modelo de datos** |  | 11d | 2016-10-03 A | 2016-10-18 A |  | 100% |  | 80h | 80h | 1,040,000 | 1,040,000 |
| 40 | 2.3.1 | Elaborar modelo de datos |  | 5d | 2016-10-03 A | 2016-10-07 A |  | 100% | Pablo de la Sotta | 40h | 40h | 520,000 | 520,000 |
| 41 | 2.3.2 | Elaborar diccionario de datos |  | 2d | 2016-10-11 A | 2016-10-12 A | 40 | 100% | Gonzalo López | 16h | 16h | 208,000 | 208,000 |
| 42 | 2.3.3 | Poblar base de datos |  | 3d | 2016-10-13 A | 2016-10-17 A | 41 | 100% | Gonzalo López | 24h | 24h | 312,000 | 312,000 |
| 43 | 2.3.4 | Entregar modelo de datos | milestone | 0d | 2016-10-18 A | 2016-10-18 A |  | 100% |  |  |  |  |  |
| 44 | 2.4 | **Aplicación Web** |  | 4d | 2016-10-18 A | 2016-10-21 A | 39 | 100% |  | 32h | 32h | 416,000 | 416,000 |
| 45 | 2.4.1 | Diagramar clases |  | 1d | 2016-10-18 A | 2016-10-18 A |  | 100% | Pablo de la Sotta | 8h | 8h | 104,000 | 104,000 |
| 46 | 2.4.2 | Elaborar casos prueba |  | 3d | 2016-10-19 A | 2016-10-21 A | 45 | 100% | Tomás Muñiz [50%] | 12h | 12h | 156,000 | 156,000 |
| 47 | 2.4.3 | Construir capa de negocio |  | 3d | 2016-10-19 A | 2016-10-21 A | 45 | 100% | Tomás Muñiz [50%] | 12h | 12h | 156,000 | 156,000 |
| 48 | 2.4.4 | Entregar documentación aplicación web | milestone | 0d | 2016-10-21 A | 2016-10-21 A | 46, 47 | 100% |  |  |  |  |  |
| 49 | 2.5 | **Terminal** |  | 7d | 2016-10-19 A | 2016-10-27 A | 39 | 100% |  | 56h | 56h | 728,000 | 728,000 |
| 50 | 2.5.1 | Diagramar clases |  | 2d | 2016-10-19 A | 2016-10-20 A | 45 | 100% | Pablo de la Sotta | 16h | 16h | 208,000 | 208,000 |
| 51 | 2.5.2 | Elaborar casos prueba |  | 5d | 2016-10-21 A | 2016-10-27 A | 50 | 100% | Fabián Jaque; Gonzalo López; Elías Baeza | 20h | 20h | 260,000 | 260,000 |
| 52 | 2.5.3 | Construir capa de negocio |  | 5d | 2016-10-21 A | 2016-10-27 A | 50 | 100% | Fabián Jaque; Gonzalo López; Elías Baeza | 20h | 20h | 260,000 | 260,000 |
| 53 | 2.5.4 | Entregar documentación Website | milestone | 0d | 2016-10-27 A | 2016-10-27 A | 51, 52 | 100% |  |  |  |  |  |

| ID | WBS | Task | Type | Duration | Start | Finish | Predecessors | Complete | Constraint | Resources | Work | Actual work | Cost | Actual cost |
| --- | --- | --- | --- | --- | --- | --- | --- | --- | --- | --- | --- | --- | --- | --- |
| 54 | 2.6 | **Servicio de pago** |  | 3d | 2016-10-24 A | 2016-10-26 A | 44 | 100% |  |  | 24h | 24h | 312,000 | 312,000 |
| 55 | 2.6.1 | Diagramar clases |  | 1d | 2016-10-24 A | 2016-10-24 A |  | 100% |  | Pablo de la Sotta | 8h | 8h | 104,000 | 104,000 |
| 56 | 2.6.2 | Elaborar plan de pruebas |  | 2d | 2016-10-25 A | 2016-10-26 A | 55 | 100% |  | Pablo de la Sotta [50%] | 8h | 8h | 104,000 | 104,000 |
| 57 | 2.6.3 | Construir capa de negocio |  | 2d | 2016-10-25 A | 2016-10-26 A | 55 | 100% |  | Pablo de la Sotta [50%] | 8h | 8h | 104,000 | 104,000 |
| 58 | 2.6.4 | Entregar sistema de pagos | milestone | 0d | 2016-10-26 A | 2016-10-26 A | 56, 57 | 100% |  |  |  |  |  |  |
| 59 | 2.7 | **WS Aseguradora** |  | 4d | 2016-10-24 A | 2016-10-27 A | 44 | 100% |  |  | 40h | 40h | 520,000 | 520,000 |
| 60 | 2.7.1 | Elaborar modelo de datos |  | 1d | 2016-10-24 A | 2016-10-24 A |  | 100% |  | Pablo de la Sotta | 8h | 8h | 104,000 | 104,000 |
| 61 | 2.7.2 | Diagramar clases |  | 1d | 2016-10-25 A | 2016-10-25 A | 60 | 100% |  | Pablo de la Sotta | 8h | 8h | 104,000 | 104,000 |
| 62 | 2.7.3 | Elaborar casos de prueba |  | 2d | 2016-10-26 A | 2016-10-27 A | 61 | 100% |  | Pablo de la Sotta [50%] | 16h | 16h | 208,000 | 208,000 |
| 63 | 2.7.4 | Construir capa de negocio |  | 2d | 2016-10-26 A | 2016-10-27 A | 61 | 100% |  | Pablo de la Sotta [50%] | 8h | 8h | 104,000 | 104,000 |
| 64 | 2.7.5 | Entregar documentación WS Aseguradora | milestone | 0d | 2016-10-27 A | 2016-10-27 A | 62, 63 | 100% |  |  |  |  |  |  |
| 65 | 2.8 | Entregar diseño del sistema | milestone | 0d | 2016-10-30 A | 2016-10-30 A |  | 100% | start no earlier than 2016-10-30 |  |  |  |  |  |
| 66 | 3 | **Iteración 3: Construcción de vistas** |  | 13d | 2016-11-02 A | 2016-11-20 A | 29 | 100% |  |  | 312h | 312h | 4,056,000 | 4,056,000 |
| 67 | 3.1 | **Aplicación Web** |  | 8d | 2016-11-02 A | 2016-11-11 A |  | 100% |  |  | 64h | 64h | 832,000 | 832,000 |
| 68 | 3.1.1 | Construcción vistas |  | 5d | 2016-11-02 A | 2016-11-08 A |  | 100% |  | Pablo de la Sotta | 40h | 40h | 520,000 | 520,000 |
| 69 | 3.1.2 | Pruebas de integración |  | 2d | 2016-11-09 A | 2016-11-10 A | 68 | 100% |  | Elías Baeza | 16h | 16h | 208,000 | 208,000 |
| 70 | 3.1.3 | Pruebas de aceptación |  | 1d | 2016-11-11 A | 2016-11-11 A | 69 | 100% |  | Elías Baeza | 8h | 8h | 104,000 | 104,000 |
| 71 | 3.1.4 | Entrega módulo web | milestone | 0d | 2016-11-11 A | 2016-11-11 A | 70 | 100% |  |  |  |  |  |  |
| 72 | 3.2 | **Terminal** |  | 13d | 2016-11-02 A | 2016-11-18 A |  | 100% |  |  | 248h | 248h | 3,224,000 | 3,224,000 |
| 73 | 3.2.1 | Construcción vistas |  | 9d | 2016-11-02 A | 2016-11-14 A |  | 100% |  | Fabián Jaque; Gonzalo López; Tomás Muñiz | 216h | 216h | 2,808,000 | 2,808,000 |
| 74 | 3.2.2 | Pruebas de integración |  | 2d | 2016-11-15 A | 2016-11-16 A | 73 | 100% |  | Elías Baeza | 16h | 16h | 208,000 | 208,000 |
| 75 | 3.2.3 | Pruebas de aceptación |  | 2d | 2016-11-17 A | 2016-11-18 A | 74 | 100% |  | Elías Baeza | 16h | 16h | 208,000 | 208,000 |
| 76 | 3.2.4 | Entrega módulo terminal | milestone | 0d | 2016-11-18 A | 2016-11-18 A | 75 | 100% |  |  |  |  |  |  |
| 77 | 3.3 | Entrega del sistema | milestone | 0d | 2016-11-20 A | 2016-11-20 A | 67, 72 | 100% | start no earlier than 2016-11-20 |  |  |  |  |  |
